# Fiber Light

Schedule from MS Project, 2022-04-04 to 2022-10-12, costs in $.
Syracuse University

## Calendars

- Standard: Mon-Fri 08:00-12:00, 13:00-17:00; Sat-Sun off.
- Late shift: Mon-Fri 18:00-21:00, 21:30-23:30; Sat-Sun off.

## Resources

| Resource | Rate |
| --- | --- |
| Yashasvi Singh | 65 |
| Isabella Smith | 55 |
| Art Peters | 50 |
| Bob Desantis | 42.5 |
| Nick Thomas | 43.75 |
| Caroline Jansen | 45 |
| Cubicle Furniture | 2600 |
| VoIP Handsets | 545 |
| Laptop w/ software | 2125 |
| Kyocera High-speed Copier/Printer | 5075 |
| Cisco Aironet Wireless Access Points | 620 |
| Ciena 3926 Aggregation Switch | 3450 |
| Cat 6E Network Cabling | 480 |

## Schedule

| ID | WBS | Task | Type | Duration | Start | Finish | Predecessors | Total slack | Constraint | Resources | Work | Cost |
| --- | --- | --- | --- | --- | --- | --- | --- | --- | --- | --- | --- | --- |
| 1 | 1 | **Initiating** |  | 18.67d | 2022-04-04 10:40 | 2022-04-28 23:30 |  | 0d |  |  | 72h | 3,764.01 |
| 2 | 1.1 | Develop project charter | manual | 27.83h | 2022-04-04 10:40 | 2022-04-06 23:30 |  |  | finish no earlier than 2022-04-05 23:30 | Yashasvi Singh [75%] | 10h | 650 |
| 3 | 1.2 | Signing Contract | manual | 0.35h | 2022-04-07 08:00 | 2022-04-07 08:20 |  |  | start no earlier than 2022-04-07 08:00 | Art Peters; Bob Desantis; Caroline Jansen; Isabella Smith; Nick Thomas; Yashasvi Singh [75%] | 2h | 99.13 |
| 4 | 1.3 | **Kick off Meeting** |  | 11d | 2022-04-07 08:00 | 2022-04-21 23:30 |  | 0d |  |  | 40h | 1,993.45 |
| 5 | 1.3.1 | Meeting conference | manual | 16h | 2022-04-07 08:00 | 2022-04-08 17:00 |  |  | finish no earlier than 2022-04-08 23:30 | Art Peters; Bob Desantis; Caroline Jansen; Isabella Smith; Nick Thomas; Yashasvi Singh [75%] | 10h | 495.65 |
| 6 | 1.3.2 | Site Survey | manual | 32h | 2022-04-11 08:00 | 2022-04-14 17:00 |  |  | start no earlier than 2022-04-11 08:00 | Art Peters; Bob Desantis; Caroline Jansen; Isabella Smith; Nick Thomas; Yashasvi Singh [75%] | 10h | 495.65 |
| 7 | 1.3.3 | Examine Requirements | manual | 22.5h | 2022-04-15 08:00 | 2022-04-18 23:30 |  |  | start no earlier than 2022-04-15 08:00 | Art Peters; Bob Desantis; Caroline Jansen; Isabella Smith; Nick Thomas; Yashasvi Singh [75%] | 8h | 396.52 |
| 8 | 1.3.4 | Consider Potential Risks | manual | 22.5h | 2022-04-19 08:00 | 2022-04-20 23:30 |  |  | start no earlier than 2022-04-19 08:00 | Art Peters [12.5%]; Bob Desantis [12.5%]; Caroline Jansen; Isabella Smith; Nick Thomas; Yashasvi Singh [75%] | 8h | 408.12 |
| 9 | 1.3.5 | Finalize Furniture supplier | manual | 14.5h | 2022-04-21 08:00 | 2022-04-21 23:30 |  |  | start no earlier than 2022-04-21 08:00 | Isabella Smith; Nick Thomas | 4h | 197.5 |
| 10 | 1.4 | **Connectivity Layout** |  | 4d | 2022-04-25 08:00 | 2022-04-28 23:30 |  | 0d |  |  | 20h | 1,021.43 |
| 11 | 1.4.1 | Furniture Map Blueprint | manual | 22.5h | 2022-04-25 08:00 | 2022-04-26 23:30 |  |  | start no earlier than 2022-04-25 08:00 | Bob Desantis; Caroline Jansen; Isabella Smith | 12h | 570 |
| 12 | 1.4.2 | Network Floor Plan | manual | 22.5h | 2022-04-27 08:00 | 2022-04-28 23:30 |  |  | start no earlier than 2022-04-27 08:00 | Yashasvi Singh [75%]; Art Peters | 8h | 451.43 |
| 13 | 2 | **Planning** |  | 15.07d | 2022-04-26 08:00 | 2022-05-17 08:31 |  | 0d |  |  | 104h | 5,204.39 |
| 14 | 2.1 | **Design and Specify** |  | 13d | 2022-04-26 08:00 | 2022-05-12 17:00 |  | 0d |  |  | 56h | 2,835.62 |
| 15 | 2.1.1 | D&S Cubicle Furniture | manual | 24h | 2022-04-26 08:00 | 2022-04-28 17:00 |  |  | finish no earlier than 2022-04-28 23:30 | Caroline Jansen; Isabella Smith | 12h | 600 |
| 16 | 2.1.2 | D&S VoIP Phones | manual | 16h | 2022-04-28 08:00 | 2022-04-29 17:00 |  |  | finish no earlier than 2022-04-29 23:30 | Art Peters; Bob Desantis | 8h | 370 |
| 17 | 2.1.3 | D&S Laptop computers | manual | 16h | 2022-04-29 08:00 | 2022-05-02 17:00 |  |  | finish no earlier than 2022-05-02 23:30 | Nick Thomas; Yashasvi Singh [75%] | 8h | 422.86 |
| 18 | 2.1.4 | D&S Cat 6e cable | manual | 24h | 2022-05-02 08:00 | 2022-05-04 17:00 |  |  | finish no earlier than 2022-05-04 23:30 | Caroline Jansen | 8h | 360 |
| 19 | 2.1.5 | D&S Cisco wireless access points | manual | 24h | 2022-05-04 08:00 | 2022-05-06 17:00 |  |  | finish no earlier than 2022-05-06 23:30 | Isabella Smith | 4h | 220 |
| 20 | 2.1.6 | D&S Kyocera color network printer-copier | manual | 16h | 2022-05-06 08:00 | 2022-05-09 17:00 |  |  | finish no earlier than 2022-05-09 23:30 | Nick Thomas | 6h | 262.5 |
| 21 | 2.1.7 | D&S Ciena 3926 aggregation switch | manual | 30.5h | 2022-05-09 08:00 | 2022-05-11 23:30 |  |  | finish no earlier than 2022-05-10 23:30 | Yashasvi Singh [75%] | 7h | 455 |
| 22 | 2.1.8 | Status Reporting 01 | manual | 16h | 2022-05-11 08:00 | 2022-05-12 17:00 |  |  | start no earlier than 2022-05-11 08:00 | Art Peters; Bob Desantis; Caroline Jansen; Isabella Smith; Nick Thomas; Yashasvi Singh [75%] | 3h | 145.26 |
| 23 | 2.2 | **Procurement** |  | 12.07d | 2022-04-29 08:00 | 2022-05-17 08:31 |  | 0d |  |  | 48h | 2,368.77 |
| 24 | 2.2.1 | Order Cubicle furniture | manual | 4h | 2022-04-29 08:00 | 2022-04-29 12:00 | 15 |  |  | Art Peters [75%]; Caroline Jansen | 8h | 381.18 |
| 25 | 2.2.2 | Order VoIP Phones | manual | 4h | 2022-05-02 08:00 | 2022-05-02 12:00 | 16 |  |  | Bob Desantis [50%]; Nick Thomas | 6h | 259.62 |
| 26 | 2.2.3 | Order Laptop Computers | manual | 8h | 2022-05-03 08:00 | 2022-05-03 17:00 | 17 |  |  | Isabella Smith; Yashasvi Singh [75%] | 8h | 474.29 |
| 27 | 2.2.4 | Order Cat 6e cable | manual | 8h | 2022-05-05 08:00 | 2022-05-05 17:00 | 18 |  |  | Art Peters | 7h | 350 |
| 28 | 2.2.5 | Order Cisco wireless access point | manual | 8h | 2022-05-09 08:00 | 2022-05-09 17:00 | 19 |  |  | Bob Desantis | 6h | 255 |
| 29 | 2.2.6 | Order Kyocera color network printer-copier | manual | 8h | 2022-05-10 08:00 | 2022-05-10 17:00 | 20 |  |  | Caroline Jansen | 5h | 225 |
| 30 | 2.2.7 | Order Ciena 3926 aggregation switch | manual | 8h | 2022-05-16 08:00 | 2022-05-16 17:00 | 21 |  |  | Isabella Smith | 5h | 275 |
| 31 | 2.2.8 | Status Reporting 02 | manual | 0.52h | 2022-05-17 08:00 | 2022-05-17 08:31 |  |  |  | Art Peters; Bob Desantis; Caroline Jansen; Isabella Smith; Nick Thomas; Yashasvi Singh [75%] | 3h | 148.7 |

Notes:
- 17: Install with Windows 11 Enterprise operating system and Microsoft Office 365.

| ID | WBS | Task | Type | Duration | Start | Finish | Predecessors | Total slack | Constraint | Calendar | Resources | Work | Cost |
| --- | --- | --- | --- | --- | --- | --- | --- | --- | --- | --- | --- | --- | --- |
| 32 | 3 | **Executing** |  | 39.5d | 2022-07-25 13:00 | 2022-09-16 17:00 |  | 0d |  |  |  | 237h | 86,600.56 |
| 33 | 3.1 | **Receive and Inspect** |  | 21.81d | 2022-07-25 13:00 | 2022-08-24 10:30 |  | 0d |  |  |  | 84h | 78,991.73 |
| 34 | 3.1.1 | R&I Cubicle Furniture | manual | 22.5h | 2022-08-19 13:00 | 2022-08-24 10:30 | 24FS+16w |  |  |  | Nick Thomas; Yashasvi Singh [75%]; Cubicle Furniture [1200%] | 29h | 32,732.86 |
| 35 | 3.1.2 | R&I Voip Phones | manual | 4h | 2022-07-25 13:00 | 2022-07-25 17:00 | 25FS+12w |  |  |  | Bob Desantis [50%]; Caroline Jansen [50%]; VoIP Handsets [1200%] | 12h | 7,065 |
| 36 | 3.1.3 | R&I Laptop Computers | manual | 22.5h | 2022-07-27 08:00 | 2022-07-29 15:30 | 26FS+12w |  |  |  | Isabella Smith; Yashasvi Singh [75%]; Laptop w/ software [1200%] | 12h | 26,211.43 |
| 37 | 3.1.4 | R&I Cat 6e cable | manual | 4h | 2022-07-29 08:00 | 2022-07-29 12:00 | 27FS+12w |  |  |  | Art Peters; Nick Thomas; Cat 6E Network Cabling | 10h | 948.75 |
| 38 | 3.1.5 | R&I Cisco wireless access points | manual | 8h | 2022-08-02 08:00 | 2022-08-02 17:00 | 28FS+12w |  |  |  | Caroline Jansen; Cisco Aironet Wireless Access Points [400%] | 8h | 2,840 |
| 39 | 3.1.6 | R&I Kyocera color network printer | manual | 8h | 2022-08-03 08:00 | 2022-08-03 17:00 | 29FS+12w |  |  |  | Isabella Smith; Kyocera High-speed Copier/Printer | 4h | 5,295 |
| 40 | 3.1.7 | R&I Ciena 3926 aggregation switch | manual | 8h | 2022-08-09 08:00 | 2022-08-09 17:00 | 30FS+12w |  |  |  | Art Peters; Ciena 3926 Aggregation Switch | 6h | 3,750 |
| 41 | 3.1.8 | Status Reporting 03 | manual | 0.52h | 2022-08-10 08:00 | 2022-08-10 08:31 |  |  |  |  | Art Peters; Bob Desantis; Caroline Jansen; Isabella Smith; Nick Thomas; Yashasvi Singh [75%] | 3h | 148.7 |
| 42 | 3.2 | **Installation** |  | 14.07d | 2022-08-24 18:00 | 2022-09-14 08:31 |  | 0d |  |  |  | 99h | 4,831.91 |
| 43 | 3.2.1 | Install Cubicle Furniture | manual | 20h | 2022-08-24 18:00 | 2022-08-29 23:30 | 34 |  |  | Late shift | Bob Desantis; Caroline Jansen | 36h | 1,575 |
| 44 | 3.2.2 | Install VoIP phones | manual | 15h | 2022-08-30 18:00 | 2022-09-01 23:30 | 35, 43 |  |  | Late shift | Art Peters; Nick Thomas | 12h | 562.5 |
| 45 | 3.2.3 | Install Laptop Computers | manual | 10.29h | 2022-09-01 18:00 | 2022-09-05 18:17 | 36, 43 |  | start no earlier than 2022-09-01 08:00 | Late shift | Isabella Smith; Yashasvi Singh [75%] | 18h | 1,067.14 |
| 46 | 3.2.4 | Install Cat 6e cable | manual | 8h | 2022-09-07 08:00 | 2022-09-07 16:00 | 37 |  |  | Late shift | Yashasvi Singh [75%]; Caroline Jansen | 8h | 428.57 |
| 47 | 3.2.5 | Install Cisco wireless access points | manual | 20h | 2022-09-08 08:00 | 2022-09-09 23:30 | 38 |  |  | Late shift | Isabella Smith | 8h | 440 |
| 48 | 3.2.6 | Install Kyocera color network printer | manual | 4h | 2022-09-12 08:00 | 2022-09-12 12:00 | 39 |  |  | Late shift | Nick Thomas; Caroline Jansen | 8h | 355 |
| 49 | 3.2.7 | Install Ciena 3926 aggregation switch | manual | 6h | 2022-09-13 08:00 | 2022-09-13 14:00 | 40 |  |  | Late shift | Bob Desantis | 6h | 255 |
| 50 | 3.2.8 | Status Reporting 04 | manual | 0.52h | 2022-09-14 08:00 | 2022-09-14 08:31 |  |  | start no earlier than 2022-09-14 08:00 |  | Art Peters; Bob Desantis; Caroline Jansen; Isabella Smith; Nick Thomas; Yashasvi Singh [75%] | 3h | 148.7 |
| 51 | 3.3 | **Test and Verification** |  | 13d | 2022-08-31 08:00 | 2022-09-16 17:00 |  | 0d |  |  |  | 54h | 2,776.92 |
| 52 | 3.3.1 | Inspect cubicle furniture | manual | 4.67h | 2022-08-31 08:00 | 2022-08-31 13:40 | 43 |  |  |  | Art Peters [87.5%]; Yashasvi Singh [75%] | 10h | 575 |
| 53 | 3.3.2 | Test VoIP Phones | manual | 8h | 2022-09-02 08:00 | 2022-09-02 17:00 | 44 |  |  |  | Bob Desantis [50%] | 4h | 170 |
| 54 | 3.3.3 | Test Laptop Computers | manual | 14.5h | 2022-09-06 08:00 | 2022-09-06 23:30 | 45 |  |  |  | Caroline Jansen; Isabella Smith | 7h | 350 |
| 55 | 3.3.4 | Test Cat 6e cable | manual | 4h | 2022-09-08 08:00 | 2022-09-08 12:00 | 46 |  |  |  | Nick Thomas; Art Peters | 8h | 375 |
| 56 | 3.3.5 | Test Cisco wireless access points | manual | 8h | 2022-09-12 08:00 | 2022-09-12 17:00 | 47 |  |  |  | Bob Desantis; Yashasvi Singh [75%] | 10h | 521.43 |
| 57 | 3.3.6 | Test Kyocera color network printer | manual | 8h | 2022-09-13 08:00 | 2022-09-13 17:00 | 48 |  |  |  | Caroline Jansen | 6h | 270 |
| 58 | 3.3.7 | Test Ciena 3926 aggregation switch | manual | 8h | 2022-09-14 08:00 | 2022-09-14 17:00 | 49 |  |  |  | Isabella Smith | 6h | 330 |
| 59 | 3.3.8 | Status Reporting 05 | manual | 16h | 2022-09-15 08:00 | 2022-09-16 17:00 |  |  | start no earlier than 2022-09-15 08:00 |  | Art Peters; Bob Desantis; Caroline Jansen; Isabella Smith; Nick Thomas; Yashasvi Singh [75%] | 3h | 185.49 |

Notes:
- 42: Installation can only be done in late shift hours i.e 6:00 pm to 11:30 pm (with ½ dinner / break)
- 53: Ensure all phones can make external calls.
- 56: Uses WPA2 encryption for Wi-Fi access.

| ID | WBS | Task | Type | Duration | Start | Finish | Total slack | Constraint | Resources | Work | Cost |
| --- | --- | --- | --- | --- | --- | --- | --- | --- | --- | --- | --- |
| 60 | 4 | **Closing** |  | 18d | 2022-09-19 08:00 | 2022-10-12 23:30 | 0d |  |  | 77h | 3,910.18 |
| 61 | 4.1 | **Seek sponsors approval** |  | 13d | 2022-09-19 08:00 | 2022-10-05 23:30 | 0d |  |  | 61h | 3,117.14 |
| 62 | 4.1.1 | Review Status Reports | manual | 22.5h | 2022-09-19 08:00 | 2022-09-20 23:30 |  | start no earlier than 2022-09-19 08:00 | Nick Thomas; Yashasvi Singh [75%] | 6h | 317.14 |
| 63 | 4.1.2 | Intial Inspection | manual | 22.5h | 2022-09-20 08:00 | 2022-09-21 23:30 |  | start no earlier than 2022-09-20 08:00 | Art Peters [62.5%]; Bob Desantis [62.5%]; Caroline Jansen [62.5%] | 12h | 550 |
| 64 | 4.1.3 | Fix open items | manual | 30.5h | 2022-09-21 08:00 | 2022-09-23 23:30 |  | start no earlier than 2022-09-21 08:00 | Isabella Smith [75%] | 11h | 605 |
| 65 | 4.1.4 | Check Softwares Authentication and Licensing | manual | 14.5h | 2022-09-26 08:00 | 2022-09-26 23:30 |  | start no earlier than 2022-09-26 08:00 | Bob Desantis; Caroline Jansen | 3h | 131.25 |
| 66 | 4.1.5 | Gather all documents | manual | 30.5h | 2022-09-26 08:00 | 2022-09-28 23:30 |  | start no earlier than 2022-09-26 08:00 | Art Peters; Yashasvi Singh [75%] | 10h | 564.29 |
| 67 | 4.1.6 | Vendor Billing | manual | 30.5h | 2022-09-28 08:00 | 2022-09-30 23:30 |  | start no earlier than 2022-09-28 08:00 | Art Peters; Bob Desantis; Caroline Jansen; Isabella Smith; Nick Thomas; Yashasvi Singh [75%] | 7h | 346.96 |
| 68 | 4.1.7 | Final Inspection and Sign-Off | manual | 30.5h | 2022-10-03 08:00 | 2022-10-05 23:30 |  | start no earlier than 2022-10-03 08:00 | Art Peters [75%]; Bob Desantis [75%]; Caroline Jansen [75%]; Isabella Smith [75%]; Nick Thomas [75%]; Yashasvi Singh [75%] | 12h | 602.5 |
| 69 | 4.2 | **Lessons Learned Meeting** |  | 5d | 2022-10-06 08:00 | 2022-10-12 23:30 | 0d |  |  | 13h | 644.35 |
| 70 | 4.2.1 | Reported Problems | manual | 22.5h | 2022-10-06 08:00 | 2022-10-07 23:30 |  | start no earlier than 2022-10-06 08:00 | Art Peters; Bob Desantis; Caroline Jansen; Isabella Smith; Nick Thomas; Yashasvi Singh [75%] | 4h | 198.26 |
| 71 | 4.2.2 | Proposed Solutions | manual | 22.5h | 2022-10-10 08:00 | 2022-10-11 23:30 |  | start no earlier than 2022-10-10 08:00 | Art Peters; Bob Desantis; Caroline Jansen; Isabella Smith; Nick Thomas; Yashasvi Singh [75%] | 4h | 198.26 |
| 72 | 4.2.3 | Ideate Novel solutions | manual | 22.5h | 2022-10-11 08:00 | 2022-10-12 23:30 |  | start no earlier than 2022-10-11 08:00 | Art Peters; Bob Desantis; Caroline Jansen; Isabella Smith; Nick Thomas; Yashasvi Singh [75%] | 5h | 247.83 |
| 73 | 4.3 | Release Project Team Members | manual | 14.5h | 2022-10-12 08:00 | 2022-10-12 23:30 |  | start no earlier than 2022-10-12 08:00 | Art Peters; Bob Desantis; Caroline Jansen; Isabella Smith; Nick Thomas; Yashasvi Singh [75%] | 3h | 148.7 |
